# Pfizer Continuum Project Plan

Schedule from MS Project, 2012-12-03 to 2013-12-05, A marks actual dates.

## Calendars

- Standard: Mon-Fri 08:00-12:00, 13:00-17:00; Sat-Sun off.

## Resources

| Resource |
| --- |
| Bala |
| Smita |
| Nelli |
| Paula |
| Hugh |
| Steve Matyas |
| Todd |
| Steve L |
| Sohal |
| Harsha |
| Naveen |
| BDA Team |
| Systems Team |
| QA3 |
| QA4 |
| QA5 |
| Vrushali |
| Max |
| VCDE |
| Anu |
| rushali |
| CTEP |
| caXchange |
| C3PR |
| caAERS |
| PSC |
| LV |
| BDA |
| "C3PR |
| Documentation |
| caGrid |
| QA |
| BAM |
| Edmond |
| NCI |
| SAIC-F |
| Web Team |
| Bill Dyer |
| CCTS Team |
| John S |
| Patrick |
| Architects |
| Christo |
| John |
| Rhett |
| Nellie |
| Steve |
| Kalpesh |
| David L |
| Stevel L |
| Kumar C |
| Gia |
| Wendy |
| Raj |
| Steve M |
| Lauren |
| Systems |
| CTRO |
| Hannes |
| SMEs |
| Gisele |
| Joe |
| CTRP Dev team |
| CBIIT |
| All |
| Analysts |
| TBD |
| Charles |
| ESST |
| Developers |
| Lisa |
| Christophe |
| Krishna |
| QA1 |
| QA2 |
| David |
| Security |
| Arch |
| Tech Leads |
| Paula B |
| Kalpana |
| KK |
| Abe |
| Kim |
| Vijay |
| CAT |
| George |
| Larry |
| Michael O |
| Resource 1 |
| Resource 2 |
| Resource3 |
| Resource 4 |
| Resource 5 |
| Gisele S |
| Dianne R |
| HR |
| NA |
| SL |
| ScenPro |
| 5AM |
| TP |
| EM |
| KE |
| JM |
| DL |
| Paul |
| Michael |
| Eilis |
| Team |
| Dev team |
| Ram P |
| NIH 508 team |
| Bryan |
| Bill D |
| Marina |
| Ye |
| Rashmi |
| Ann Wiley |
| Henry |
| QA* |
| Systems* |
| Shine |

## Schedule

| ID | WBS | Task | Type | Duration | Start | Finish | Predecessors | Complete | Remaining | Total slack | Free slack | Constraint | Resources | Work | Actual work |
| --- | --- | --- | --- | --- | --- | --- | --- | --- | --- | --- | --- | --- | --- | --- | --- |
| 1 | 1 | **caIntegrator** |  | 264d? | 2012-12-03 A | 2013-12-05 |  | 1% | 260.86d? | 0d |  | start no earlier than 2012-12-03 |  | 2608h | 24h |
| 2 | 1.1 | **caIntegrator 1.4.01 - patch release** |  | 15d | 2013-01-02 | 2013-01-22 |  |  |  | 227d |  |  |  | 120h |  |
| 3 | 1.1.1 | Appscan on QA |  | 6d | 2013-01-02 | 2013-01-09 |  |  |  | 227d | 0d | start no earlier than 2013-01-02 | Systems* | 48h |  |
| 4 | 1.1.2 | Appscan on Stage |  | 4d | 2013-01-10 | 2013-01-15 | 3 |  |  | 227d | 0d | start no earlier than 2012-12-05 | Systems* | 32h |  |
| 5 | 1.1.3 | QA reports and Approval |  | 2d | 2013-01-16 | 2013-01-17 | 4 |  |  | 227d | 0d |  | QA* | 16h |  |
| 6 | 1.1.4 | Prod Release |  | 3d | 2013-01-18 | 2013-01-22 | 5 |  |  | 227d |  |  | Systems* | 24h |  |
| 7 | 1.2 | **caIntegrator 1.4.1** |  | 157d? | 2012-12-06 A | 2013-07-12 |  | 3% | 152.9d? | 16d |  |  |  | 1120h | 24h |
| 8 | 1.2.1 | MILESTONE: PROJECT KICKOFF |  | 1d | 2012-12-06 A | 2012-12-06 A |  | 100% |  |  |  | start no earlier than 2012-12-06 |  |  |  |
| 9 | 1.2.2 | EPLC Project Management Plan |  | 3d | 2013-01-02 A | 2013-01-04 A |  | 100% |  |  |  | start no earlier than 2013-01-02 | Shine | 24h | 24h |
| 10 | 1.2.3 | Github Access |  | 2d | 2013-01-07 A | 2013-01-08 A |  | 100% |  |  |  | start no earlier than 2013-01-07 |  |  |  |
| 11 | 1.2.4 | OSDI / Build Changes |  | 20d? | 2013-01-09 | 2013-02-05 | 10 |  |  | 0d |  | start no earlier than 2013-01-02 | Abe | 160h |  |
| 12 | 1.2.5 | Bug Fixes |  | 8d | 2013-02-06 | 2013-02-15 | 11 |  |  | 0d |  |  | Abe | 64h |  |
| 13 | 1.2.6 | CSM/UPT upgrade changes |  | 4d | 2013-02-18 | 2013-02-21 | 12 |  |  | 0d |  |  | Abe | 32h |  |
| 14 | 1.2.7 | caBIO replacement changes |  | 30d | 2013-02-22 | 2013-04-04 | 13 |  |  | 0d |  |  | Abe | 240h |  |
| 15 | 1.2.8 | Performance Improvements |  | 10d | 2013-04-05 | 2013-04-18 | 14 |  |  | 0d |  |  | Abe | 80h |  |
| 16 | 1.2.9 | 508 Compliance (100%) |  | 5d | 2013-04-19 | 2013-04-25 | 15 |  |  | 0d |  |  | Abe | 40h |  |
| 17 | 1.2.10 | Regression Testing on QA tier |  | 12d | 2013-04-26 | 2013-05-13 | 16 |  |  | 7.5d | 0d |  | QA* | 96h |  |
| 18 | 1.2.11 | Installer Testing |  | 4d | 2013-05-14 | 2013-05-17 | 17 |  |  | 38d | 0d |  | QA* | 32h |  |
| 19 | 1.2.12 | Section 508 testing on QA tier |  | 2d | 2013-05-20 | 2013-05-21 | 18 |  |  | 38d |  |  | QA* | 16h |  |
| 20 | 1.2.13 | Appscan on QA tier |  | 15d | 2013-05-14 | 2013-06-03 | 17 |  |  | 7.5d | 0d |  | Systems* | 120h |  |
| 21 | 1.2.14 | Test Results Review and Reporting | milestone | 0d | 2013-06-03 | 2013-06-03 | 20 |  |  | 22.5d | 0d |  | QA* |  |  |
| 22 | 1.2.15 | Deploy to STAGE |  | 1d | 2013-06-04 | 2013-06-04 | 21 |  |  | 7.5d | 0d |  | Systems* | 8h |  |
| 23 | 1.2.16 | Appscan on STAGE tier |  | 15d | 2013-06-05 | 2013-06-25 | 22 |  |  | 7.5d | 0d |  | Systems* | 120h |  |
| 24 | 1.2.17 | Regression Testing on STAGE |  | 5d | 2013-06-05 | 2013-06-11 | 22 |  |  | 17.5d | 10d |  | QA* | 40h |  |
| 25 | 1.2.18 | Test Results Review and Reporting |  | 3d | 2013-06-26 | 2013-06-28 | 23, 24 |  |  | 40.5d | 0d |  | QA* | 24h |  |
| 26 | 1.2.19 | Create release artifacts |  | 1d | 2013-06-05 | 2013-06-05 | 22 |  |  | 27d |  |  |  |  |  |
| 27 | 1.2.20 | Deploy to PRODUCTION |  | 2d | 2013-07-01 | 2013-07-02 | 25 |  |  | 40.5d | 0d |  | Systems* | 16h |  |
| 28 | 1.2.21 | Update product landing page |  | 0.5d | 2013-07-03 | 2013-07-03 | 27 |  |  | 40.5d | 0d |  |  |  |  |
| 29 | 1.2.22 | QA smoke tests PRODUCTION |  | 1d | 2013-07-03 | 2013-07-04 | 27, 28 |  |  | 40.5d | 0d |  | QA* | 8h |  |
| 30 | 1.2.23 | MILESTONE: RELEASE 1.4.1 | milestone | 0d | 2013-07-04 | 2013-07-04 | 29 |  |  | 22.5d |  | start no earlier than 2012-01-09 |  |  |  |
| 31 | 1.2.24 | User Support |  | 85d | 2013-03-18 | 2013-07-12 |  |  |  | 16d |  | finish no earlier than 2013-07-12 |  |  |  |

| ID | WBS | Task | Type | Duration | Start | Finish | Predecessors | Total slack | Free slack | Constraint | Resources | Work |
| --- | --- | --- | --- | --- | --- | --- | --- | --- | --- | --- | --- | --- |
| 32 | 1.3 | **caIntegrator 1.5** |  | 160d | 2013-04-26 | 2013-12-05 |  | 0d |  |  |  | 1368h |
| 33 | 1.3.1 | Tech Stack Upgrades - Spring |  | 20d | 2013-04-26 | 2013-05-23 | 16 | 0d |  |  | Abe | 160h |
| 34 | 1.3.2 | Bug Fixes and Improvements |  | 15d | 2013-05-24 | 2013-06-13 | 33 | 0d |  |  | Abe | 120h |
| 35 | 1.3.3 | Java 7 upgrade |  | 30d | 2013-06-14 | 2013-07-25 | 34 | 0d |  |  | Abe | 240h |
| 36 | 1.3.4 | Support for release 1.4.1 |  | 10d | 2013-07-26 | 2013-08-08 | 35 | 0d |  |  | Abe | 80h |
| 37 | 1.3.5 | Usability and Other Improvements Requested |  | 30d | 2013-08-09 | 2013-09-19 | 36 | 0d |  |  | Abe | 240h |
| 38 | 1.3.6 | Compliance (EPLC, Section 508) |  | 5d | 2013-09-20 | 2013-09-26 | 37 | 0d |  |  | Abe | 40h |
| 39 | 1.3.7 | MILESTONE: EPLC REVIEW (as needed) | milestone | 0d | 2013-09-26 | 2013-09-26 | 38 | 50d |  | start no earlier than 2012-01-09 |  |  |
| 40 | 1.3.8 | Regression Testing on QA tier |  | 12d | 2013-09-27 | 2013-10-14 | 38 | 0d |  |  | QA* | 96h |
| 41 | 1.3.9 | Installer Testing |  | 4d | 2013-10-15 | 2013-10-18 | 40 | 32d | 0d |  | QA* | 32h |
| 42 | 1.3.10 | Section 508 testing on QA tier |  | 2d | 2013-10-21 | 2013-10-22 | 41 | 32d |  |  | QA* | 16h |
| 43 | 1.3.11 | Appscan on QA tier |  | 15d | 2013-10-15 | 2013-11-04 | 40 | 0d |  |  | Systems* | 120h |
| 44 | 1.3.12 | Test Results Review and Reporting |  | 3d | 2013-11-05 | 2013-11-07 | 43 | 0d |  |  | QA* | 24h |
| 45 | 1.3.13 | Deploy to STAGE |  | 1d | 2013-11-08 | 2013-11-08 | 44 | 0d |  |  | Systems* | 8h |
| 46 | 1.3.14 | Appscan on STAGE tier |  | 15d | 2013-11-11 | 2013-11-29 | 45 | 0d |  |  | Systems* | 120h |
| 47 | 1.3.15 | Regression Testing on STAGE |  | 5d | 2013-11-11 | 2013-11-15 | 45 | 10d |  |  | QA* | 40h |
| 48 | 1.3.16 | Test Results Review and Reporting |  | 1d | 2013-12-02 | 2013-12-02 | 46, 47 | 0d |  |  | QA* | 8h |
| 49 | 1.3.17 | Create release artifacts |  | 1d | 2013-11-11 | 2013-11-11 | 45 | 18d |  |  |  |  |
| 50 | 1.3.18 | Deploy to PRODUCTION |  | 2d | 2013-12-03 | 2013-12-04 | 48 | 0d |  |  | Systems* | 16h |
| 51 | 1.3.19 | Update product landing page |  | 0.5d | 2013-12-05 | 2013-12-05 | 50 | 0.5d |  |  |  |  |
| 52 | 1.3.20 | QA smoke tests PRODUCTION |  | 1d | 2013-12-05 | 2013-12-05 | 50 | 0d |  |  | QA* | 8h |
| 53 | 1.3.21 | MILESTONE: RELEASE 1.5 | milestone | 0d | 2013-12-05 | 2013-12-05 | 52 | 0d |  | start no earlier than 2012-01-09 |  |  |
| 54 | 1.3.22 | User Support |  | 88d | 2013-08-06 | 2013-12-05 | 7 | 0d |  | finish no earlier than 2013-12-05 |  |  |
| 65 | 1.4 | *QA and Systems are external resources and NOT being proposed under this contract. | milestone | 0d | 2012-12-03 | 2012-12-03 |  | 260d |  |  |  |  |
